# 项目时间规划

Schedule from MS Project, 2020-04-17 to 2020-06-30.

## Calendars

- 标准: Mon-Fri 08:00-12:00, 13:00-17:00; Sat-Sun off.

## Resources

| Resource |
| --- |
| UE/UI设计师 |
| 项目经理 |
| 技术专家 |
| 产品经理 |
| 测试专家 |
| 程序员1 |
| 程序员2 |
| 程序员3 |
| UI专家 |
| 设计专家 |
| 需求专家 |
| 质量专家 |
| 测试员1 |
| 测试员2 |

## Schedule

| ID | WBS | Task | Type | Duration | Start | Finish | Predecessors | Constraint | Resources | Work |
| --- | --- | --- | --- | --- | --- | --- | --- | --- | --- | --- |
| 1 | 1 | **启动** |  | 1d | 2020-04-17 | 2020-04-17 |  |  |  | 104h |
| 2 | 1.1 | 组建核心团队 | manual | 1d | 2020-04-17 | 2020-04-17 |  | finish no later than 2020-04-17 | 项目经理; UI专家; 设计专家; 需求专家; 质量专家 | 40h |
| 3 | 1.2 | 干系人分析 | manual | 1d | 2020-04-17 | 2020-04-17 |  | finish no later than 2020-04-17 | 项目经理 | 8h |
| 4 | 1.3 | 里程碑计划 | manual | 1d | 2020-04-17 | 2020-04-17 |  | finish no later than 2020-04-17 | 项目经理 | 8h |
| 5 | 1.4 | 制定项目章程 | manual | 1d | 2020-04-17 | 2020-04-17 |  | finish no later than 2020-04-17 | 项目经理 | 8h |
| 6 | 1.5 | 项目启动大会 | manual | 1d | 2020-04-17 | 2020-04-17 | 2, 3, 4, 5 | finish no later than 2020-04-17 | UI专家; 设计专家; 项目经理; 需求专家; 质量专家 | 40h |
| 7 | 2 | **规划** |  | 39d | 2020-04-20 | 2020-06-11 | 6 |  |  | 464h |
| 8 | 2.1 | **规划范围** |  | 18d | 2020-04-20 | 2020-05-13 |  |  |  | 208h |
| 9 | 2.1.1 | 制定需求说明书 | manual | 10d | 2020-04-20 | 2020-05-01 | 6 | as late as possible | 需求专家 | 80h |
| 10 | 2.1.2 | 界面设计 | manual | 5d | 2020-05-04 | 2020-05-08 | 9 | finish no later than 2020-06-03 | UI专家 | 40h |
| 11 | 2.1.3 | 详细设计说明书 | manual | 5d | 2020-05-04 | 2020-05-08 | 9 | finish no later than 2020-06-03 | 设计专家 | 40h |
| 12 | 2.1.4 | 项目范围说明书 | manual | 3d | 2020-05-06 | 2020-05-08 | 9 | as late as possible | 项目经理 | 24h |
| 13 | 2.1.5 | 创建WBS | manual | 2d | 2020-05-11 | 2020-05-12 | 10, 11, 12 | as late as possible | 项目经理 | 16h |
| 14 | 2.1.6 | 形成范围基准 | manual | 1d | 2020-05-13 | 2020-05-13 | 13 | as late as possible | 项目经理 | 8h |
| 15 | 2.2 | **规划时间** |  | 8d | 2020-05-14 | 2020-05-25 |  |  |  | 64h |
| 16 | 2.2.1 | 排列工作包顺序 | manual | 1d | 2020-05-14 | 2020-05-14 | 14 | as late as possible | 项目经理 | 8h |
| 17 | 2.2.2 | 估算资源 | manual | 2d | 2020-05-15 | 2020-05-18 | 16 | as late as possible | 项目经理 | 16h |
| 18 | 2.2.3 | 估算持续时间 | manual | 2d | 2020-05-19 | 2020-05-20 | 17 | as late as possible | 项目经理 | 16h |
| 19 | 2.2.4 | 制定进度计划 | manual | 2d | 2020-05-21 | 2020-05-22 | 18 | as late as possible | 项目经理 | 16h |
| 20 | 2.2.5 | 形成进度基准 | manual | 1d | 2020-05-25 | 2020-05-25 | 19 | as late as possible | 项目经理 | 8h |
| 21 | 2.3 | **规划成本** |  | 6d | 2020-05-26 | 2020-06-02 |  |  |  | 48h |
| 22 | 2.3.1 | 项目成本估算 | manual | 3d | 2020-05-26 | 2020-05-28 | 20 | as late as possible | 项目经理 | 24h |
| 23 | 2.3.2 | 项目预算 | manual | 2d | 2020-05-29 | 2020-06-01 | 22 | as late as possible | 项目经理 | 16h |
| 24 | 2.3.3 | 形成范围基准 | manual | 1d | 2020-06-02 | 2020-06-02 | 23 | as late as possible | 项目经理 | 8h |

| ID | WBS | Task | Type | Duration | Start | Finish | Predecessors | Constraint | Resources | Work |
| --- | --- | --- | --- | --- | --- | --- | --- | --- | --- | --- |
| 25 | 2.4 | **规划质量** |  | 4d | 2020-05-28 | 2020-06-02 |  |  |  | 32h |
| 26 | 2.4.1 | 制定测试计划 | manual | 2d | 2020-05-28 | 2020-05-29 | 14 | as late as possible | 质量专家 | 16h |
| 27 | 2.4.2 | 制定测试用例 | manual | 2d | 2020-06-01 | 2020-06-02 | 26 | as late as possible | 质量专家 | 16h |
| 28 | 2.5 | **规划人力资源** |  | 2d | 2020-05-27 | 2020-05-28 |  |  |  | 16h |
| 29 | 2.5.1 | 制定人力资源计划 | manual | 1d | 2020-05-27 | 2020-05-27 | 17 | as late as possible | 项目经理 | 8h |
| 30 | 2.5.2 | 制定人员配备管理计划 | manual | 1d | 2020-05-28 | 2020-05-28 | 29 | as late as possible | 项目经理 | 8h |
| 31 | 2.6 | **规划沟通** |  | 3d | 2020-05-29 | 2020-06-02 |  |  |  | 24h |
| 32 | 2.6.1 | 制定沟通管理计划 | manual | 3d | 2020-05-29 | 2020-06-02 | 30 | as late as possible | 项目经理 | 24h |
| 33 | 2.7 | **规划采购** |  | 2d | 2020-06-01 | 2020-06-02 |  |  |  | 16h |
| 34 | 2.7.1 | 自制外购分析 | manual | 1d | 2020-06-01 | 2020-06-01 | 17 | as late as possible | 项目经理 | 8h |
| 35 | 2.7.2 | 制定采购文件 | manual | 1d | 2020-06-02 | 2020-06-02 | 34 | as late as possible | 项目经理 | 8h |
| 36 | 2.8 | **规划风险** |  | 6d | 2020-06-03 | 2020-06-10 |  |  |  | 48h |
| 37 | 2.8.1 | 识别风险 | manual | 2d | 2020-06-03 | 2020-06-04 | 15, 21, 25, 28, 31, 33 | as late as possible | 项目经理 | 16h |
| 38 | 2.8.2 | 风险分析 | manual | 2d | 2020-06-05 | 2020-06-08 | 37 | as late as possible | 项目经理 | 16h |
| 39 | 2.8.3 | 制定风险登记册 | manual | 2d | 2020-06-09 | 2020-06-10 | 38 | as late as possible | 项目经理 | 16h |
| 40 | 2.9 | 规划整合 | manual | 1d | 2020-06-11 | 2020-06-11 | 39 | as late as possible | 项目经理 | 8h |
| 41 | 3 | **执行与监控** |  | 13d? | 2020-06-12 | 2020-06-30 |  |  |  | 936h |
| 42 | 3.1 | 组建项目团队 | manual | 1d | 2020-06-12 | 2020-06-12 | 7 | as late as possible | 测试员1; 项目经理; 测试员2; 程序员1; 程序员2; 程序员3 | 48h |
| 43 | 3.2 | **项目执行** |  | 10d? | 2020-06-15 | 2020-06-26 |  |  |  | 168h |
| 44 | 3.2.1 | **产品模块** |  | 10d? | 2020-06-15 | 2020-06-26 |  |  |  | 168h |
| 45 | 3.2.1.1 | 引导页 | manual | 3d | 2020-06-24 | 2020-06-26 |  | as late as possible | 程序员1 | 24h |
| 46 | 3.2.1.2 | **注册登录** |  | 4d | 2020-06-15 | 2020-06-18 | 42 |  |  | 32h |
| 47 | 3.2.1.2.1 | 首页 | manual | 2d | 2020-06-15 | 2020-06-16 |  | as late as possible | 程序员1 | 16h |
| 48 | 3.2.1.2.2 | 资料库 | manual | 2d | 2020-06-17 | 2020-06-18 | 47 | as late as possible | 程序员1 | 16h |

| ID | WBS | Task | Type | Duration | Start | Finish | Predecessors | Constraint | Resources | Work |
| --- | --- | --- | --- | --- | --- | --- | --- | --- | --- | --- |
| 49 | 3.2.1.3 | **资料示例** |  | 3d | 2020-06-19 | 2020-06-23 |  |  |  | 24h |
| 50 | 3.2.1.3.1 | 拍照 | manual | 1d | 2020-06-19 | 2020-06-19 | 48 | as late as possible | 程序员2 | 8h |
| 51 | 3.2.1.3.2 | 拍照搜题 | manual | 1d | 2020-06-22 | 2020-06-22 | 50 | as late as possible | 程序员2 | 8h |
| 52 | 3.2.1.3.3 | 搜题结果 | manual | 1d | 2020-06-23 | 2020-06-23 | 51 | as late as possible | 程序员2 | 8h |
| 53 | 3.2.1.4 | **问答** |  | 3d | 2020-06-24 | 2020-06-26 | 49 |  |  | 48h |
| 54 | 3.2.1.4.1 | 提问界面 | manual | 1d | 2020-06-26 | 2020-06-26 | 49 | as late as possible | 程序员2 | 8h |
| 55 | 3.2.1.4.2 | 讲师介绍 | manual | 3d | 2020-06-24 | 2020-06-26 |  | as late as possible | 程序员3 | 24h |
| 56 | 3.2.1.4.3 | 搜题答案 | manual | 1d | 2020-06-25 | 2020-06-25 | 49 | as late as possible | 程序员1; 程序员3 | 16h |
| 57 | 3.2.1.5 | **我的** |  | 1d? | 2020-06-26 | 2020-06-26 | 56 |  |  | 40h |
| 58 | 3.2.1.5.1 | 个人主页 | manual | 1d | 2020-06-26 | 2020-06-26 | 49 | as late as possible | 程序员3 | 8h |
| 59 | 3.2.1.5.2 | **管理员模块** |  | 1d? | 2020-06-26 | 2020-06-26 |  |  |  | 32h |
| 60 | 3.2.1.5.2.1 | 讲师审核 | manual | 1d? | 2020-06-26 | 2020-06-26 |  | as late as possible | 程序员2 | 8h |
| 61 | 3.2.1.5.2.2 | 广告管理 | manual | 1d? | 2020-06-26 | 2020-06-26 |  | as late as possible | 程序员1 | 8h |
| 62 | 3.2.1.5.2.3 | 考试库资料管理 | manual | 1d? | 2020-06-26 | 2020-06-26 |  | as late as possible | 程序员3 | 8h |
| 63 | 3.2.1.5.2.4 | 分析并管理数据 | manual | 1d? | 2020-06-26 | 2020-06-26 |  | as late as possible | 程序员1 | 8h |
| 64 | 3.3 | **项目监控** |  | 6d | 2020-06-23 | 2020-06-30 |  |  | 程序员3 | 368h |
| 65 | 3.3.1 | 各项指标监控 | manual | 2d | 2020-06-23 | 2020-06-24 | 42 | as late as possible | 测试员1; 项目经理; 测试员2 | 48h |
| 66 | 3.3.2 | 监控评审 | manual | 2d | 2020-06-25 | 2020-06-26 | 65 | as late as possible | 设计专家; 项目经理; 需求专家; 质量专家 | 64h |
| 67 | 3.3.3 | 变更评审 | manual | 2d | 2020-06-29 | 2020-06-30 | 66 | as late as possible | 设计专家; 项目经理; 需求专家; 质量专家 | 64h |
| 68 | 3.3.4 | 例会 | manual | 2d | 2020-06-29 | 2020-06-30 | 42 | as late as possible | UI专家; 测试员1; 项目经理; 测试员2; 程序员1; 程序员2; 设计专家; 需求专家; 质量专家 | 144h |
| 69 | 3.4 | **管理干系人** |  | 1d | 2020-06-30 | 2020-06-30 |  |  |  | 24h |
| 70 | 3.4.1 | 发布项目信息 | manual | 1d | 2020-06-30 | 2020-06-30 | 42 | as late as possible | 项目经理 | 8h |
| 71 | 3.4.2 | 报告监控指标 | manual | 1d | 2020-06-30 | 2020-06-30 | 42 | as late as possible | 项目经理 | 8h |
| 72 | 3.4.3 | 干系人沟通 | manual | 1d | 2020-06-30 | 2020-06-30 | 42 | as late as possible | 项目经理 | 8h |

| ID | WBS | Task | Type | Duration | Start | Finish | Predecessors | Constraint | Resources | Work |
| --- | --- | --- | --- | --- | --- | --- | --- | --- | --- | --- |
| 73 | 3.5 | **团队建设** |  | 1d | 2020-06-30 | 2020-06-30 |  |  |  | 240h |
| 74 | 3.5.1 | 培训 | manual | 1d | 2020-06-30 | 2020-06-30 | 42 | as late as possible | UI专家; 测试员1; 项目经理; 测试员2; 程序员1; 程序员2; 程序员3; 设计专家; 需求专家; 质量专家 | 80h |
| 75 | 3.5.2 | 娱乐活动 | manual | 1d | 2020-06-30 | 2020-06-30 | 42 | as late as possible | UI专家; 测试员1; 测试员2; 程序员1; 程序员2; 程序员3; 设计专家; 项目经理; 需求专家; 质量专家 | 80h |
| 76 | 3.5.3 | 沟通 | manual | 1d | 2020-06-30 | 2020-06-30 | 42 | as late as possible | UI专家; 测试员1; 测试员2; 程序员1; 程序员2; 程序员3; 设计专家; 项目经理; 需求专家; 质量专家 | 80h |
| 77 | 3.6 | 采购 | manual | 1d | 2020-06-30 | 2020-06-30 | 42 | as late as possible | 项目经理 | 8h |
| 78 | 3.7 | 项目验收 | manual | 1d | 2020-06-29 | 2020-06-29 | 43 | as late as possible | 项目经理; UI专家; 测试员1; 测试员2; 程序员1; 程序员2; 程序员3; 设计专家; 需求专家; 质量专家 | 80h |
| 79 | 4 | **收尾** |  | 1d | 2020-06-30 | 2020-06-30 |  |  |  | 168h |
| 80 | 4.1 | 项目终验 | manual | 1d | 2020-06-30 | 2020-06-30 | 78 | as late as possible | UI专家; 测试员1; 测试员2; 程序员1; 程序员2; 程序员3; 设计专家; 项目经理; 需求专家; 质量专家 | 80h |
| 81 | 4.2 | 结束采购 | manual | 1d | 2020-06-30 | 2020-06-30 | 78 | as late as possible | 项目经理 | 8h |
| 82 | 4.3 | 项目内部收尾 | manual | 1d | 2020-06-30 | 2020-06-30 | 78 | as late as possible | UI专家; 测试员1; 测试员2; 程序员1; 程序员2; 程序员3; 设计专家; 项目经理; 需求专家; 质量专家 | 80h |
